# P2_Sharer Project

Schedule from MS Project, 2024-02-12 to 2024-11-21.

## Calendars

- Standard: Mon-Fri 08:00-12:00, 13:00-17:00; Sat-Sun off.

## Resources

| Resource |
| --- |
| Project Manager 8 |
| Requirement Engineer 10 |
| Requirement Engineer 11 |
| Requirement Engineer 12 |
| Requirement Engineer 19 |
| Requirement Engineer 63 |
| Requirement Engineer 64 |
| Requirement Engineer 65 |
| Requirement Engineer 66 |
| Requirement Engineer 67 |
| System Engineer 1 |
| System Engineer 2 |
| System Engineer 3 |
| System Engineer 4 |
| System Engineer 8 |
| System Engineer 9 |
| System Engineer 12 |
| System Engineer 13 |
| System Engineer 20 |
| System Engineer 21 |
| System Engineer 22 |
| System Engineer 23 |
| System Engineer 24 |
| Programmers/Software Engineer 1 |
| Programmers/Software Engineer 2 |
| Programmers/Software Engineer 5 |
| Programmers/Software Engineer 6 |
| Programmers/Software Engineer 7 |
| Programmers/Software Engineer 8 |
| Programmers/Software Engineer 9 |
| Programmers/Software Engineer 10 |
| Programmers/Software Engineer 11 |
| Programmers/Software Engineer 12 |
| Programmers/Software Engineer 30 |
| Programmers/Software Engineer 31 |
| Programmers/Software Engineer 32 |
| Programmers/Software Engineer 33 |
| Programmers/Software Engineer 34 |
| Programmers/Software Engineer 35 |
| Test Engineer 1 |
| Test Engineer 7 |
| Test Engineer 8 |
| Test Engineer 9 |
| Test Engineer 10 |
| Test Engineer 38 |
| Test Engineer 39 |
| Test Engineer 40 |
| Test Engineer 41 |
| Documentation Engineer 5 |
| Documentation Engineer 6 |
| Documentation Engineer 7 |
| Documentation Engineer 8 |
| Documentation Engineer 9 |
| Documentation Engineer 46 |
| Documentation Engineer 47 |
| Documentation Engineer 48 |
| Documentation Engineer 49 |

## Schedule

| ID | WBS | Task | Duration | Start | Finish | Predecessors | Total slack | Free slack | Resources | Work |
| --- | --- | --- | --- | --- | --- | --- | --- | --- | --- | --- |
| 1 | 1 | **Project2_Sharer** | 204d | 2024-02-12 | 2024-11-21 |  | 0d |  |  | 10736h |
| 2 | 1.1 | **Project Plan** | 13d | 2024-02-12 | 2024-02-28 |  | 0d |  |  | 344h |
| 3 | 1.1.1 | Write Plan | 3d | 2024-02-12 | 2024-02-14 |  | 0d |  | Project Manager 8 | 24h |
| 4 | 1.1.2 | **Review Plan** | 7d | 2024-02-15 | 2024-02-23 | 3 | 0d |  |  | 296h |
| 5 | 1.1.2.1 | Preparation for review | 5d | 2024-02-15 | 2024-02-21 | 3 | 0d |  | Documentation Engineer 9; Programmers/Software Engineer 12; Requirement Engineer 19; System Engineer 13; Test Engineer 10 | 200h |
| 6 | 1.1.2.2 | Review meeting | 2d | 2024-02-22 | 2024-02-23 | 5 | 0d |  | Documentation Engineer 9; Programmers/Software Engineer 12; Project Manager 8; Requirement Engineer 19; System Engineer 13; Test Engineer 10 | 96h |
| 7 | 1.1.3 | Rework | 3d | 2024-02-26 | 2024-02-28 | 4 | 0d |  | Project Manager 8 | 24h |
| 8 | 1.2 | **Requirement** | 26d | 2024-02-29 | 2024-04-04 | 2 | 0d |  |  | 856h |
| 9 | 1.2.1 | Write requirements | 4d | 2024-02-29 | 2024-03-05 |  | 0d |  | Requirement Engineer 66; Requirement Engineer 65; Requirement Engineer 63; Requirement Engineer 64 | 128h |
| 10 | 1.2.2 | **Review Requirements** | 18d | 2024-03-06 | 2024-03-29 | 9 | 0d |  |  | 632h |
| 11 | 1.2.2.1 | Preparation for review | 11d | 2024-03-06 | 2024-03-20 | 9 | 0d |  | Documentation Engineer 8; Programmers/Software Engineer 11; System Engineer 12; Test Engineer 9 | 352h |
| 12 | 1.2.2.2 | Review Meeting | 7d | 2024-03-21 | 2024-03-29 | 11 | 0d |  | Documentation Engineer 8; Programmers/Software Engineer 11; Requirement Engineer 63; System Engineer 12; Test Engineer 9 | 280h |
| 13 | 1.2.3 | Rework | 4d | 2024-04-01 | 2024-04-04 | 10 | 0d |  | Requirement Engineer 63; Requirement Engineer 64; Requirement Engineer 65 | 96h |
| 14 | 1.3 | **Lab and Environment Setup** | 18d | 2024-04-05 | 2024-04-30 | 8 | 9d |  |  | 424h |
| 15 | 1.3.1 | **Hardware** | 13d | 2024-04-05 | 2024-04-23 | 8 | 9d | 0d |  | 344h |
| 16 | 1.3.1.1 | **Install Network Elements** | 7d | 2024-04-05 | 2024-04-15 | 8 | 9d | 0d |  | 152h |
| 17 | 1.3.1.1.1 | Routers | 2d | 2024-04-05 | 2024-04-08 | 8 | 9d | 0d | System Engineer 20; System Engineer 21 | 32h |
| 18 | 1.3.1.1.2 | Bridge | 5d | 2024-04-09 | 2024-04-15 | 17 | 9d |  | System Engineer 22; System Engineer 20; System Engineer 21 | 120h |
| 19 | 1.3.1.2 | Install Server | 3d | 2024-04-16 | 2024-04-18 | 16 | 9d | 0d | System Engineer 21; System Engineer 22; System Engineer 23; System Engineer 20 | 96h |
| 20 | 1.3.1.3 | Install Clients | 3d | 2024-04-19 | 2024-04-23 | 19 | 9d |  | System Engineer 21; System Engineer 22; System Engineer 23; System Engineer 20 | 96h |
| 21 | 1.3.2 | **Software** | 5d | 2024-04-24 | 2024-04-30 | 15 | 9d |  |  | 80h |
| 22 | 1.3.2.1 | Install Development Tools | 3d | 2024-04-24 | 2024-04-26 | 15 | 9d | 0d | System Engineer 20; System Engineer 21 | 48h |
| 23 | 1.3.2.2 | Install Testing Tools | 2d | 2024-04-29 | 2024-04-30 | 22 | 9d |  | System Engineer 23; System Engineer 24 | 32h |
| 24 | 1.4 | **Analysis/Design Document** | 27d | 2024-04-05 | 2024-05-13 | 8 | 0d |  |  | 896h |
| 25 | 1.4.1 | Write DD | 4d | 2024-04-05 | 2024-04-10 | 8 | 0d |  | System Engineer 3; System Engineer 1; System Engineer 2; System Engineer 4 | 128h |

| ID | WBS | Task | Duration | Start | Finish | Predecessors | Total slack | Free slack | Resources | Work |
| --- | --- | --- | --- | --- | --- | --- | --- | --- | --- | --- |
| 26 | 1.4.2 | **Review DD** | 20d | 2024-04-11 | 2024-05-08 | 25 | 0d |  |  | 696h |
| 27 | 1.4.2.1 | Preparation for DD | 13d | 2024-04-11 | 2024-04-29 | 25 | 0d |  | Documentation Engineer 7; Programmers/Software Engineer 10; Requirement Engineer 12; Test Engineer 8 | 416h |
| 28 | 1.4.2.2 | Review Meeting | 7d | 2024-04-30 | 2024-05-08 | 27 | 0d |  | Documentation Engineer 7; Programmers/Software Engineer 10; Requirement Engineer 12; System Engineer 1; Test Engineer 8 | 280h |
| 29 | 1.4.3 | Rework | 3d | 2024-05-09 | 2024-05-13 | 26 | 0d |  | System Engineer 3; System Engineer 1; System Engineer 2 | 72h |
| 30 | 1.5 | **Data Model** | 10d | 2024-05-14 | 2024-05-27 | 24 | 128d |  |  | 216h |
| 31 | 1.5.1 | Create Data Model | 3d | 2024-05-14 | 2024-05-16 | 24 | 128d | 0d | System Engineer 8; System Engineer 4 | 48h |
| 32 | 1.5.2 | **Review Data Model** | 3d | 2024-05-17 | 2024-05-21 | 31 | 128d | 0d |  | 104h |
| 33 | 1.5.2.1 | Preparation for DM | 2d | 2024-05-17 | 2024-05-20 | 31 | 128d | 0d | Documentation Engineer 6; Programmers/Software Engineer 9; Requirement Engineer 11; Test Engineer 7 | 64h |
| 34 | 1.5.2.2 | Review Meeting | 1d | 2024-05-21 | 2024-05-21 | 33 | 128d |  | System Engineer 8; Documentation Engineer 6; Programmers/Software Engineer 9; Test Engineer 7; Requirement Engineer 11 | 40h |
| 35 | 1.5.3 | Rework | 4d | 2024-05-22 | 2024-05-27 | 32 | 128d |  | System Engineer 8; System Engineer 4 | 64h |
| 36 | 1.6 | **Coding and unit test** | 89d | 2024-05-14 | 2024-09-13 | 24, 14 | 0d |  |  | 3904h |
| 37 | 1.6.1 | Write Code | 30d | 2024-05-14 | 2024-06-24 | 24 | 0d |  | Programmers/Software Engineer 31; Programmers/Software Engineer 32; Programmers/Software Engineer 33; Programmers/Software Engineer 34; Programmers/Software Engineer 35; Programmers/Software Engineer 30 | 1440h |
| 38 | 1.6.2 | **Unit Testing** | 30d | 2024-06-25 | 2024-08-05 | 37 | 0d |  |  | 1400h |
| 39 | 1.6.2.1 | Prepare/Execute Test Cases | 5d | 2024-06-25 | 2024-07-01 | 37 | 0d |  | Programmers/Software Engineer 31; Programmers/Software Engineer 32; Programmers/Software Engineer 33; Programmers/Software Engineer 34; Programmers/Software Engineer 35 | 200h |
| 40 | 1.6.2.2 | Fix Found Defects | 11d | 2024-07-02 | 2024-07-16 | 39 | 0d |  | Programmers/Software Engineer 31; Programmers/Software Engineer 32; Programmers/Software Engineer 33; Programmers/Software Engineer 34; Programmers/Software Engineer 35; Programmers/Software Engineer 30 | 528h |
| 41 | 1.6.2.3 | Test Fixed Defects | 14d | 2024-07-17 | 2024-08-05 | 40 | 0d |  | Programmers/Software Engineer 30; Programmers/Software Engineer 31; Programmers/Software Engineer 34; Programmers/Software Engineer 35; Programmers/Software Engineer 33; Programmers/Software Engineer 32 | 672h |
| 42 | 1.6.3 | **Code Inspection** | 29d | 2024-08-06 | 2024-09-13 | 38 | 0d |  |  | 1064h |
| 43 | 1.6.3.1 | Preparation for Code Inspection | 16d | 2024-08-06 | 2024-08-27 | 38 | 0d |  | Documentation Engineer 46; Requirement Engineer 63; System Engineer 20; Test Engineer 38 | 512h |
| 44 | 1.6.3.2 | Code Inspection Meeting | 9d | 2024-08-28 | 2024-09-09 | 43 | 0d |  | Programmers/Software Engineer 30; Documentation Engineer 46; Requirement Engineer 63; System Engineer 20; Test Engineer 38 | 360h |
| 45 | 1.6.3.3 | Rework | 4d | 2024-09-10 | 2024-09-13 | 44 | 0d |  | Programmers/Software Engineer 30; Programmers/Software Engineer 31; Programmers/Software Engineer 32; Programmers/Software Engineer 33; Programmers/Software Engineer 34; Programmers/Software Engineer 35 | 192h |
| 46 | 1.7 | **Testing** | 144d | 2024-04-05 | 2024-10-23 | 8 | 0d |  |  | 2264h |
| 47 | 1.7.1 | Write test plan(TP) | 9d | 2024-04-05 | 2024-04-17 | 8 | 118d | 0d | Test Engineer 38; Test Engineer 39; Test Engineer 40; Test Engineer 41; Test Engineer 10 | 360h |
| 48 | 1.7.2 | **Review TP** | 17d | 2024-04-18 | 2024-05-10 | 47 | 118d |  |  | 560h |
| 49 | 1.7.2.1 | Preparation for TP | 9d | 2024-04-18 | 2024-04-30 | 47 | 118d | 0d | System Engineer 8; Documentation Engineer 5; Programmers/Software Engineer 8; Requirement Engineer 10 | 288h |
| 50 | 1.7.2.2 | Review TP Meeting | 5d | 2024-05-01 | 2024-05-07 | 49 | 118d | 0d | Test Engineer 38; Documentation Engineer 5; Programmers/Software Engineer 8; Requirement Engineer 10; System Engineer 8 | 200h |
| 51 | 1.7.2.3 | Rework | 3d | 2024-05-08 | 2024-05-10 | 50 | 118d |  | Test Engineer 38; Test Engineer 39; Test Engineer 40 | 72h |
| 52 | 1.7.3 | Execute TP(test cases) | 17d | 2024-09-16 | 2024-10-08 | 36 | 0d |  | Test Engineer 8; Test Engineer 9; Test Engineer 10; Test Engineer 38; Test Engineer 39; Test Engineer 40 | 816h |
| 53 | 1.7.4 | Fix Found Defects | 11d | 2024-10-09 | 2024-10-23 | 52 | 0d |  | Programmers/Software Engineer 1; Programmers/Software Engineer 2; Programmers/Software Engineer 5; Programmers/Software Engineer 6; Programmers/Software Engineer 7; Programmers/Software Engineer 8 | 528h |

| ID | WBS | Task | Duration | Start | Finish | Predecessors | Total slack | Free slack | Resources | Work |
| --- | --- | --- | --- | --- | --- | --- | --- | --- | --- | --- |
| 54 | 1.8 | **Documentation** | 31d | 2024-04-05 | 2024-05-17 | 8 | 134d |  |  | 1072h |
| 55 | 1.8.1 | User Documentation | 4d | 2024-04-05 | 2024-04-10 | 8 | 134d | 0d | Documentation Engineer 46; Documentation Engineer 47; Documentation Engineer 48; Documentation Engineer 49 | 128h |
| 56 | 1.8.2 | **Review UD** | 27d | 2024-04-11 | 2024-05-17 | 55 | 134d |  |  | 944h |
| 57 | 1.8.2.1 | Preparation for UD review meeting | 13d | 2024-04-11 | 2024-04-29 | 55 | 134d | 0d | Programmers/Software Engineer 35; Requirement Engineer 67; Test Engineer 1; System Engineer 12 | 416h |
| 58 | 1.8.2.2 | Review UD Meeting | 10d | 2024-04-30 | 2024-05-13 | 57 | 134d | 0d | Documentation Engineer 46; Programmers/Software Engineer 35; Requirement Engineer 67; System Engineer 12; Test Engineer 1 | 400h |
| 59 | 1.8.2.3 | Rework | 4d | 2024-05-14 | 2024-05-17 | 58 | 134d |  | Documentation Engineer 46; Documentation Engineer 47; Documentation Engineer 48; Documentation Engineer 49 | 128h |
| 60 | 1.9 | **Training** | 21d | 2024-10-24 | 2024-11-21 | 46 | 0d |  |  | 760h |
| 61 | 1.9.1 | Training Handouts(TH) | 7d | 2024-10-24 | 2024-11-01 | 46 | 0d |  | Documentation Engineer 46; Documentation Engineer 47; Documentation Engineer 48; Documentation Engineer 49; Documentation Engineer 9 | 280h |
| 62 | 1.9.2 | **Review Training Handouts(TH)** | 14d | 2024-11-04 | 2024-11-21 | 61 | 0d |  |  | 480h |
| 63 | 1.9.2.1 | Preparation for TH review meeting | 7d | 2024-11-04 | 2024-11-12 | 61 | 0d |  | Programmers/Software Engineer 10; Requirement Engineer 10; System Engineer 9; Test Engineer 10 | 224h |
| 64 | 1.9.2.2 | Review TH Meeting | 4d | 2024-11-13 | 2024-11-18 | 63 | 0d |  | Programmers/Software Engineer 10; Requirement Engineer 10; System Engineer 9; Test Engineer 10; Documentation Engineer 46 | 160h |
| 65 | 1.9.2.3 | Rework | 3d | 2024-11-19 | 2024-11-21 | 64 | 0d |  | Documentation Engineer 46; Documentation Engineer 47; Documentation Engineer 48; Documentation Engineer 49 | 96h |
